Schedule from GanttProject, 2024-09-02 to 2024-12-27.

## Calendars

- Project calendar: Mon-Fri working; Sat-Sun off.

## Resources

| Resource |
| --- |
| Manager-QA |
| Test TL |
| Web TL |
| Back dev 1 |
| Back dev 2 |
| Back dev 3 |
| Architect+Devops |
| Front dev 1 |
| Front dev 2 |
| Front dev 3 |
| Sys dev 1 |
| Sys dev 2 |
| Sys dev 3 |
| Sys dev 4 |
| Test Analyst 1 |
| Test Analyst 2 |
| QA |

## Schedule

| ID | Task | Type | Duration | Start | Finish | Predecessors | Complete | Resources | Cost |
| --- | --- | --- | --- | --- | --- | --- | --- | --- | --- |
| 1 | Общее управление |  | 85d | 2024-09-02 | 2024-12-27 |  |  | Manager-QA | 40 |
| 2 | Web: управление |  | 75d | 2024-09-16 | 2024-12-27 |  |  | Web TL | 40 |
| 3 | Тесты: управление |  | 75d | 2024-09-16 | 2024-12-27 |  |  | Test TL | 40 |
| 4 | Дополнение спецификации API обвязки и Exec |  | 75d | 2024-09-16 | 2024-12-27 |  |  | Architect+Devops | 30 |
| 5 | Фаза 0: подготовка | milestone | 0d | 2024-09-13 | 2024-09-13 |  |  |  |  |
| 6 | Фронт: инструкции |  | 5d | 2024-09-02 | 2024-09-06 |  |  | Manager-QA | 3 |
| 7 | Фронт: заготовка |  | 5d | 2024-09-09 | 2024-09-13 |  |  | Manager-QA | 6 |
| 8 | Бэк: инструкции |  | 5d | 2024-09-02 | 2024-09-06 |  |  | Web TL | 3 |
| 9 | Бэк: заготовка |  | 5d | 2024-09-09 | 2024-09-13 |  |  | Web TL | 4 |
| 10 | Схема данных |  | 5d | 2024-09-02 | 2024-09-06 |  |  | Architect+Devops | 6 |
| 11 | Описание API обвязки |  | 5d | 2024-09-09 | 2024-09-13 |  |  | Architect+Devops | 6 |
| 12 | Exec: демо |  | 5d | 2024-09-02 | 2024-09-06 |  |  | Test Analyst 1 | 4 |
| 13 | Exec: инструкции |  | 5d | 2024-09-09 | 2024-09-13 |  |  | Test Analyst 2 | 3 |
| 14 | Тесты: заготовка |  | 5d | 2024-09-02 | 2024-09-06 |  |  | Test TL | 6 |
| 15 | Описание API Exec |  | 5d | 2024-09-09 | 2024-09-13 |  |  | Test TL; Test Analyst 2 | 12 |
| 16 | Фаза 1 | milestone | 0d | 2024-10-25 | 2024-10-25 |  |  |  |  |
| 17 | Тесты: доанализ требований |  | 25d | 2024-09-16 | 2024-10-18 |  |  | Test Analyst 1 | 10 |
| 18 | Web: доанализ требований |  | 25d | 2024-09-16 | 2024-10-18 |  |  | Test Analyst 2 | 10 |
| 19 | Разработка тестовой методологии |  | 15d | 2024-09-16 | 2024-10-04 |  |  | Manager-QA | 10 |
| 20 | Изучение требований, терминологии, тестирования |  | 15d | 2024-09-16 | 2024-10-04 |  |  | QA | 15 |
| 21 | QA тестов 1 |  | 10d | 2024-10-07 | 2024-10-18 |  |  | Manager-QA [50%]; QA [50%] | 10 |
| 22 | Тесты: обучение |  | 5d | 2024-09-16 | 2024-09-20 |  |  | Sys dev 3; Sys dev 4 | 4 |
| 23 | Тесты исполняемого файла |  | 5d | 2024-09-23 | 2024-09-27 | 22 |  | Sys dev 3 | 2 |
| 24 | Тесты модуля конфигурации |  | 5d | 2024-09-23 | 2024-09-27 | 22 |  | Sys dev 4 | 2 |
| 25 | Тесты cli |  | 5d | 2024-09-30 | 2024-10-04 |  |  | Sys dev 3 | 2 |
| 26 | Тесты логгера |  | 5d | 2024-09-30 | 2024-10-04 |  |  | Sys dev 4 | 2 |
| 27 | Тесты IPC |  | 5d | 2024-10-07 | 2024-10-11 |  |  | Sys dev 3 | 2 |
| 28 | Тесты корректности кэша |  | 5d | 2024-10-07 | 2024-10-11 |  |  | Sys dev 4 | 2 |
| 29 | Интеграция: базовые тесты |  | 5d | 2024-10-14 | 2024-10-18 |  |  | Sys dev 1; Sys dev 2; Sys dev 3; Sys dev 4 | 16 |
| 30 | Exec: обучение |  | 5d | 2024-09-16 | 2024-09-20 |  |  | Sys dev 1; Sys dev 2 | 4 |
| 31 | Exec: запуск бинарника |  | 5d | 2024-09-23 | 2024-09-27 | 30 |  | Sys dev 1 | 4 |
| 32 | Exec: получение stdin |  | 5d | 2024-09-30 | 2024-10-04 | 31 |  | Sys dev 1 | 2 |
| 33 | Exec: получение сокета |  | 5d | 2024-09-30 | 2024-10-04 | 31 |  | Sys dev 2 | 2 |
| 34 | Exec: получение вывода |  | 5d | 2024-10-07 | 2024-10-11 | 31 |  | Sys dev 1 | 2 |
| 35 | Exec: получение статистик /proc |  | 5d | 2024-10-07 | 2024-10-11 | 31 |  | Sys dev 2 | 2 |
| 36 | Фронт: обучение |  | 5d | 2024-09-16 | 2024-09-20 |  |  | Front dev 1; Front dev 2; Front dev 3 | 6 |
| 37 | Авторизация пользователя |  | 5d | 2024-09-16 | 2024-09-20 |  |  | Back dev 1 | 4 |
| 38 | Изменение пароля |  | 5d | 2024-09-23 | 2024-09-27 | 37 |  | Back dev 1 | 4 |
| 39 | Получение групп для пользователя.. |  | 5d | 2024-09-30 | 2024-10-04 |  |  | Back dev 1 | 2 |
| 40 | Создание и редактирование группы |  | 5d | 2024-10-07 | 2024-10-11 | 39 |  | Back dev 1 | 2 |
| 41 | Интеграция: пользователи |  | 5d | 2024-10-14 | 2024-10-18 | 37, 38, 39, 40, 42, 43, 44, 45, 46, 47, 48 |  | Back dev 1; Front dev 1 | 8 |
| 42 | Восстановление пароля |  | 5d | 2024-09-23 | 2024-09-27 |  |  | Front dev 1 | 1 |
| 43 | Welcome страница |  | 5d | 2024-09-23 | 2024-09-27 |  |  | Front dev 1 | 1 |
| 44 | Страница входа |  | 5d | 2024-09-23 | 2024-09-27 |  |  | Front dev 1 | 1 |
| 45 | Навигация в шапке |  | 5d | 2024-09-30 | 2024-10-04 |  |  | Front dev 1 | 2 |
| 46 | Личный кабинет |  | 5d | 2024-09-30 | 2024-10-04 | 44 |  | Front dev 1 | 2 |
| 47 | Создание редактирование группы |  | 5d | 2024-10-07 | 2024-10-11 |  |  | Front dev 1 | 2 |
| 48 | Экран групп |  | 5d | 2024-10-07 | 2024-10-11 |  |  | Front dev 1 | 2 |
| 49 | Восстановление пароля |  | 5d | 2024-09-16 | 2024-09-20 |  |  | Back dev 2 | 1 |
| 50 | Имплементация создания теста |  | 5d | 2024-09-16 | 2024-09-20 |  |  | Back dev 2 | 2 |
| 51 | Имплементация получения теста |  | 5d | 2024-09-23 | 2024-09-27 | 50 |  | Back dev 2 | 1 |
| 52 | Имплементация поиска тестов по имени |  | 5d | 2024-09-23 | 2024-09-27 | 50 |  | Back dev 2 | 1 |
| 53 | Имплементация удаления тестов |  | 5d | 2024-09-30 | 2024-10-04 | 50 |  | Back dev 2 | 2 |
| 54 | Имплементация редактирования тестов |  | 5d | 2024-09-30 | 2024-10-04 | 50 |  | Back dev 2 | 1 |
| 55 | Интеграция: тесты |  | 5d | 2024-10-14 | 2024-10-18 | 50, 51, 52, 53, 54, 56, 57, 58, 59 |  | Back dev 2; Front dev 2 | 8 |
| 56 | Модальное окно создания теста |  | 5d | 2024-09-23 | 2024-09-27 |  |  | Front dev 2 | 3 |
| 57 | Модальное окно просмотра теста |  | 5d | 2024-09-30 | 2024-10-04 |  |  | Front dev 2 | 2 |
| 58 | Модальное окно редактирования теста |  | 5d | 2024-10-07 | 2024-10-11 |  | 30% | Front dev 2 | 1 |
| 59 | Страница просмотра тестов |  | 5d | 2024-10-07 | 2024-10-11 |  |  | Front dev 2 | 2 |
| 60 | Имплементация создания лабораторной |  | 5d | 2024-09-16 | 2024-09-20 |  |  | Back dev 3 | 2 |
| 61 | Имплементация получения лабораторной |  | 5d | 2024-09-16 | 2024-09-20 |  |  | Back dev 3 | 1 |
| 62 | Имплементация редактирования лабораторной |  | 5d | 2024-09-23 | 2024-09-27 | 60 |  | Back dev 3 | 1 |
| 63 | Имплементация удаления лабораторной |  | 5d | 2024-09-23 | 2024-09-27 | 60 |  | Back dev 3 | 2 |
| 64 | Получение попыток сдачи |  | 5d | 2024-09-30 | 2024-10-04 |  |  | Back dev 3 | 2 |
| 65 | Интеграция: лабораторные |  | 5d | 2024-10-14 | 2024-10-18 | 60, 61, 62, 63, 66, 67, 68, 69 |  | Back dev 2; Front dev 3 | 8 |
| 66 | Модальное окно создания лабораторной |  | 5d | 2024-09-23 | 2024-09-27 |  |  | Front dev 3 | 2 |
| 67 | Модальное окно редактирования лабораторной |  | 5d | 2024-09-23 | 2024-09-27 |  |  | Front dev 3 | 1 |
| 68 | Страница просмотра лабораторной |  | 5d | 2024-09-30 | 2024-10-04 |  |  | Front dev 3 | 3 |
| 69 | Страница просмотра лабораторных |  | 5d | 2024-10-07 | 2024-10-11 |  |  | Front dev 3 | 3 |
| 70 | Фаза 2 | milestone | 0d | 2024-11-29 | 2024-11-29 |  |  |  |  |

| ID | Task | Type | Duration | Start | Finish | Predecessors | Resources | Cost |
| --- | --- | --- | --- | --- | --- | --- | --- | --- |
| 71 | Тесты: доанализ требований 2 |  | 20d | 2024-10-28 | 2024-11-22 |  | Test Analyst 1 | 8 |
| 72 | Web: доанализ требований 2 |  | 20d | 2024-10-28 | 2024-11-22 |  | Test Analyst 2 | 8 |
| 73 | QA обвязки 1 |  | 10d | 2024-10-28 | 2024-11-08 |  | Manager-QA [50%]; QA [50%] | 15 |
| 74 | QA тестов 2 |  | 10d | 2024-11-11 | 2024-11-22 |  | Manager-QA [50%]; QA [50%] | 15 |
| 75 | Тесты многозадачности |  | 5d | 2024-10-28 | 2024-11-01 |  | Sys dev 3 | 2 |
| 76 | Тесты сети |  | 10d | 2024-10-28 | 2024-11-08 |  | Sys dev 4 | 2 |
| 77 | Тесты кэша |  | 5d | 2024-11-11 | 2024-11-15 |  | Sys dev 3 | 2 |
| 78 | Нагрузочные тесты |  | 10d | 2024-11-04 | 2024-11-15 |  | Sys dev 4 | 6 |
| 79 | Интеграция: нагрузочные тесты |  | 5d | 2024-11-18 | 2024-11-22 |  | Sys dev 1; Sys dev 2; Sys dev 3; Sys dev 4 | 16 |
| 80 | Exec: жесткие ограничения cgroup 1 |  | 15d | 2024-10-28 | 2024-11-15 |  | Sys dev 1 | 6 |
| 81 | Exec: жесткие ограничения cgroup 2 |  | 15d | 2024-10-28 | 2024-11-15 |  | Sys dev 2 | 6 |
| 82 | Часть модального окна создания/редактирования лабораторной - форма выбора тестов |  | 5d | 2024-10-28 | 2024-11-01 | 52, 66, 67 | Front dev 3 | 1 |
| 83 | Страница просмотра попыток сдачи |  | 5d | 2024-11-04 | 2024-11-08 | 64 | Front dev 3 | 2 |
| 84 | Модальное окно загрузки лабораторных |  | 5d | 2024-11-11 | 2024-11-15 |  | Front dev 3 | 2 |
| 85 | Интеграция попыток сдачи |  | 5d | 2024-11-18 | 2024-11-22 |  | Back dev 3; Front dev 3 | 8 |
| 86 | Проверка лабораторной в новой попытке сдачи |  | 10d | 2024-10-28 | 2024-11-08 |  | Back dev 3 | 8 |
| 87 | Создание сессий сдачи |  | 5d | 2024-10-28 | 2024-11-01 |  | Back dev 2 | 2 |
| 88 | Получение сессий сдачи |  | 5d | 2024-11-04 | 2024-11-08 |  | Back dev 2 | 2 |
| 89 | Поиск и фильтрация сессий сдачи |  | 5d | 2024-11-11 | 2024-11-15 |  | Back dev 2 | 2 |
| 90 | Интеграция сессий сдачи |  | 5d | 2024-11-18 | 2024-11-22 |  | Back dev 2; Front dev 2 | 8 |
| 91 | Просмотр сессий сдачи |  | 5d | 2024-10-28 | 2024-11-01 |  | Front dev 2 | 2 |
| 92 | Просмотр сессий сдачи студентов с поиском |  | 5d | 2024-11-04 | 2024-11-08 |  | Front dev 2 | 2 |
| 93 | Модификация страницы просмотра сессии сдачи - для преподавателя |  | 5d | 2024-11-11 | 2024-11-15 |  | Front dev 2 | 1.5 |
| 94 | Личная информация по всем пользователям |  | 5d | 2024-10-28 | 2024-11-01 |  | Back dev 1 | 2 |
| 95 | Личная информация пользователя |  | 5d | 2024-10-28 | 2024-11-01 |  | Back dev 1 | 2 |
| 96 | Создание/редактирование пользователя |  | 5d | 2024-11-04 | 2024-11-08 |  | Back dev 1 | 2 |
| 97 | Создание множества пользователей |  | 5d | 2024-11-11 | 2024-11-15 |  | Back dev 1 | 2 |
| 98 | Интеграция пользователей |  | 5d | 2024-11-18 | 2024-11-22 |  | Back dev 1; Front dev 1 | 8 |
| 99 | Модалки создания редактирования пользователя |  | 5d | 2024-10-28 | 2024-11-01 |  | Front dev 1 | 2 |
| 100 | Экран всех пользователей для админа |  | 5d | 2024-11-04 | 2024-11-08 |  | Front dev 1 | 2 |
| 101 | Переход на экран группы |  | 5d | 2024-11-11 | 2024-11-15 |  | Front dev 1 | 2 |
| 102 | Фаза 3 | milestone | 0d | 2024-12-27 | 2024-12-27 |  |  |  |
| 103 | Тесты: доанализ требований 3 |  | 20d | 2024-12-02 | 2024-12-27 |  | Test Analyst 1 | 8 |
| 104 | Web: доанализ требований 3 |  | 20d | 2024-12-02 | 2024-12-27 |  | Test Analyst 2 | 8 |
| 105 | QA обвязки 2 |  | 10d | 2024-12-02 | 2024-12-13 |  | Manager-QA [50%]; QA [50%] | 15 |
| 106 | Общее QA |  | 10d | 2024-12-16 | 2024-12-27 |  | Manager-QA [50%]; QA [50%] | 15 |
| 107 | Модификация страницы просмотра лабораторных - для студента |  | 5d | 2024-12-02 | 2024-12-06 |  | Front dev 3 | 1.5 |
| 108 | Модификация страницы просмотра лабораторных - для учителя |  | 5d | 2024-12-02 | 2024-12-06 |  | Front dev 3 | 1.5 |
| 109 | Модификация страницы просмотра лабораторной - для студента |  | 5d | 2024-12-09 | 2024-12-13 |  | Front dev 3 | 1.5 |
| 110 | Модификация страницы просмотра лабораторной - для учителя |  | 5d | 2024-12-09 | 2024-12-13 |  | Front dev 3 | 1.5 |
| 111 | Модификация страницы просмотра попытки сдачи - для преподавателя |  | 5d | 2024-12-16 | 2024-12-20 |  | Front dev 3 | 1.5 |
| 112 | Переход к лабораторной по студенту |  | 5d | 2024-12-02 | 2024-12-06 |  | Front dev 2 | 1.5 |
| 113 | Фронт: исправление багов |  | 20d | 2024-12-02 | 2024-12-27 |  | Front dev 1; Front dev 2 | 20 |
| 114 | Бэк: исправление багов |  | 20d | 2024-12-02 | 2024-12-27 |  | Back dev 2; Back dev 3 | 20 |
| 115 | Данные для рейтинговой таблицы |  | 10d | 2024-12-02 | 2024-12-13 |  | Back dev 1 | 10 |
| 116 | Интеграция рейтинговой таблицы |  | 5d | 2024-12-23 | 2024-12-27 |  | Back dev 1; Front dev 1 | 8 |
| 117 | Рейтинговая таблица |  | 10d | 2024-12-02 | 2024-12-13 |  | Front dev 1 | 10 |
| 118 | Сортировки по срезу |  | 5d | 2024-12-16 | 2024-12-20 |  | Front dev 2 | 1.5 |
| 119 | Тесты под valgrind и санитайзерами |  | 10d | 2024-12-02 | 2024-12-13 |  | Sys dev 3 | 6 |
| 120 | Тесты с ограниченными ресурсами |  | 10d | 2024-12-02 | 2024-12-13 |  | Sys dev 4 | 6 |
| 121 | Интеграция: дополнительные тесты |  | 5d | 2024-12-16 | 2024-12-20 |  | Sys dev 1; Sys dev 2; Sys dev 3; Sys dev 4 | 16 |
| 122 | Exec: ограничение fs, mount |  | 10d | 2024-12-02 | 2024-12-13 |  | Sys dev 1 | 6 |
| 123 | Exec: ограничение network workspace |  | 10d | 2024-12-02 | 2024-12-13 |  | Sys dev 2 | 6 |
